# IWB 项目进度

Schedule from a web Gantt chart, 2025-03-05 to 2025-03-27.
Sundays are off

## Schedule

| ID | WBS | Task | Type | Duration | Start | Finish | Complete | inPeople |
| --- | --- | --- | --- | --- | --- | --- | --- | --- |
| 2 | 1 | **整机样品采购，拆机学习** | fixed start | 1d | 2025-03-05 | 2025-03-05 | 100% |  |
| 3 | 1.1 | 55，65，75，86整机采购 | fixed start, fixed end | 1d | 2025-03-05 | 2025-03-05 | 100% | 采购 |
| 4 | 2 | **55，86样品自组装（确认精确BOM，编制SOP）** |  | 20d | 2025-03-05 | 2025-03-27 | 51% | 研发，采购 |
| 5 | 2.1 | 55嘀嗒背光采购，功能确认 |  | 1d | 2025-03-05 | 2025-03-05 | 100% | 采购 |
| 6 | 2.2 | 86嘀嗒背光采购 |  | 3d | 2025-03-05 | 2025-03-07 | 50% | 采购 |
| 7 | 2.3 | 55型材设计打样（增加摄像头，NFC） |  | 20d | 2025-03-05 | 2025-03-27 | 50% | 研发 |
| 8 | 2.4 | 86型材设计打样（增加NFC) |  | 20d | 2025-03-05 | 2025-03-27 | 50% | 研发 |
| 9 | 2.5 | 55结构件设计打样（五金挡板，转接板等） |  | 10d | 2025-03-05 | 2025-03-15 | 50% | 研发 |
| 10 | 2.6 | 4800摄像头+8阵列 样品采购 |  | 1d | 2025-03-05 | 2025-03-05 | 100% | 采购 |
| 11 | 2.7 | 55 液晶玻璃样品采购 |  | 1d | 2025-03-05 | 2025-03-05 | 100% | 采购 |
| 12 | 2.8 | 86 液晶玻璃样品采购 |  | 1d | 2025-03-05 | 2025-03-05 | 100% | 采购 |
| 13 | 2.9 | 主板，电源板，NFC OPS接口 样品采购 |  | 1d | 2025-03-05 | 2025-03-05 |  | 采购 |
| 14 | 2.10 | 机内线材确认以及打样 |  | 1d | 2025-03-05 | 2025-03-05 |  | 研发，采购 |
| 15 | 2.11 | 55，86 触摸条 样品采购 |  | 1d | 2025-03-05 | 2025-03-05 |  | 研发，采购 |
